# Speech Recognition

Schedule from MS Project, 2004-09-01 to 2005-04-27, status date 2004-10-10, costs in $, A marks actual dates.
AR Design

## Calendars

- Standard: Mon-Sun 08:00-12:00, 13:00-17:00. Exceptions (off unless hours are given): 2004-09-04 to 2004-09-05, 2004-09-11 to 2004-09-12, 2004-09-18 to 2004-09-19, 2004-09-25 to 2004-09-26, 2004-10-02 to 2004-10-03, 2004-10-09 to 2004-10-10.

## Resources

| Resource | Rate |
| --- | --- |
| System Analyst | 45 |
| Programmer | 40 |
| Test Programmer | 35 |
| Technical Writer | 35 |

## Schedule

| ID | WBS | Task | Type | Duration | Start | Finish | Predecessors | Complete | Remaining | Baseline start | Baseline finish | Baseline duration | Total slack | Constraint | Resources | Work | Actual work | Cost | Baseline cost | Actual cost |
| --- | --- | --- | --- | --- | --- | --- | --- | --- | --- | --- | --- | --- | --- | --- | --- | --- | --- | --- | --- | --- |
| 1 | 1 | **Speech Recognition** |  | 226d? | 2004-09-01 08:00 A | 2005-04-27 08:00 |  | 36% | 144.34d? | 2004-09-01 08:00 | 2005-05-04 17:00 | 176d? | 0d |  |  | 609h | 196h | 23,165 | 20,371.25 | 7,730 |
| 2 | 1.1 | **Fall 2004** |  | 79d? | 2004-09-01 08:00 A | 2004-11-30 17:00 |  | 97% | 2.3d? | 2004-09-01 08:00 | 2004-12-08 17:00 | 71d? | 147d |  |  | 203h | 196h | 8,045 | 5,006.25 | 7,730 |
| 3 | 1.1.1 | Class: Introduction |  | 0.38d? | 2004-09-01 08:00 A | 2004-09-01 11:00 A |  | 100% |  | 2004-09-01 08:00 | 2004-09-01 11:00 | 0.38d? |  | start no earlier than 2004-09-01 08:00 | System Analyst | 3h | 3h | 135 | 135 | 135 |
| 4 | 1.1.2 | Class: Design Project |  | 0.38d? | 2004-09-08 08:00 A | 2004-09-08 11:00 A |  | 100% |  | 2004-09-08 08:00 | 2004-09-08 11:00 | 0.38d? |  | start no earlier than 2004-09-08 08:00 | System Analyst | 3h | 3h | 135 | 135 | 135 |
| 5 | 1.1.3 | **PPR Work** |  | 14.33d? | 2004-09-03 08:00 A | 2004-09-23 10:40 A |  | 100% |  | 2004-09-03 08:00 | 2004-09-23 10:40 | 14.33d? |  |  |  | 38h | 38h | 1,470 | 2,396.25 | 1,470 |
| 6 | 1.1.3.1 | Approval |  | 1d? | 2004-09-03 08:00 A | 2004-09-03 17:00 A |  | 100% |  | 2004-09-03 08:00 | 2004-09-03 17:00 | 1d? |  |  | System Analyst [25%] | 2h | 2h | 90 | 90 | 90 |
| 7 | 1.1.3.2 | **Design Block Diagram** |  | 0.75d? | 2004-09-06 08:00 A | 2004-09-06 15:00 A |  | 100% |  |  |  |  |  |  |  | 6h | 6h | 270 |  | 270 |
| 8 | 1.1.3.2.1 | 1: Record and Filter Wave File |  | 0.12d? | 2004-09-06 08:00 A | 2004-09-06 09:00 A |  | 100% |  | 2004-09-06 08:00 | 2004-09-06 09:00 | 0.12d? |  |  | System Analyst | 1h | 1h | 45 | 45 | 45 |
| 9 | 1.1.3.2.2 | 2: Write Wave File to Disk |  | 0.12d? | 2004-09-06 09:00 A | 2004-09-06 10:00 A | 8 | 100% |  | 2004-09-06 09:00 | 2004-09-06 10:00 | 0.12d? |  |  | System Analyst | 1h | 1h | 45 | 45 | 45 |
| 10 | 1.1.3.2.3 | 3: Insert Wave File to Library |  | 0.12d? | 2004-09-06 10:00 A | 2004-09-06 11:00 A | 9 | 100% |  | 2004-09-06 10:00 | 2004-09-06 11:00 | 0.12d? |  |  | System Analyst | 1h | 1h | 45 | 45 | 45 |
| 11 | 1.1.3.2.4 | 4: Record Wave Sample |  | 0.12d? | 2004-09-06 11:00 A | 2004-09-06 12:00 A | 10 | 100% |  | 2004-09-06 11:00 | 2004-09-06 12:00 | 0.12d? |  |  | System Analyst | 1h | 1h | 45 | 45 | 45 |
| 12 | 1.1.3.2.5 | 5: Recognize the Sample from the Library |  | 0.12d? | 2004-09-06 13:00 A | 2004-09-06 14:00 A | 11 | 100% |  | 2004-09-06 13:00 | 2004-09-06 14:00 | 0.12d? |  |  | System Analyst | 1h | 1h | 45 | 45 | 45 |
| 13 | 1.1.3.2.6 | 6: Launch User's Application |  | 0.12d? | 2004-09-06 14:00 A | 2004-09-06 15:00 A | 12 | 100% |  | 2004-09-06 14:00 | 2004-09-06 15:00 | 0.12d? |  |  | System Analyst | 1h | 1h | 45 | 45 | 45 |
| 14 | 1.1.3.3 | Test and Verification |  | 0.5d? | 2004-09-06 14:00 A | 2004-09-07 09:00 A |  | 100% |  | 2004-09-06 14:00 | 2004-09-07 14:00 | 1d? |  | start no earlier than 2004-09-06 14:00 | System Analyst [50%]; Technical Writer | 6h | 6h | 230 | 180 | 230 |
| 15 | 1.1.3.4 | Write Project Proposal |  | 2.5d? | 2004-09-15 14:00 A | 2004-09-20 09:00 A | 14 | 100% |  | 2004-09-15 14:00 | 2004-09-21 17:00 | 4.38d? |  | finish no earlier than 2004-09-21 17:00 | Technical Writer | 20h | 20h | 700 | 1,575 | 700 |
| 16 | 1.1.3.5 | Make Slideshow |  | 1.33d? | 2004-09-22 08:00 A | 2004-09-23 10:40 A | 15 | 100% |  | 2004-09-22 08:00 | 2004-09-23 10:40 | 1.33d? |  |  | System Analyst [37.5%] | 4h | 4h | 180 | 180 | 180 |
| 17 | 1.1.3.6 | Present PPR | milestone | 0d? | 2004-09-23 10:40 A | 2004-09-23 10:40 A | 16 | 100% |  | 2004-09-23 10:40 | 2004-09-23 10:40 | 0d? |  | finish no earlier than 2004-09-22 17:00 | System Analyst |  |  |  |  |  |
| 18 | 1.1.4 | **PDR Work** |  | 13d? | 2004-09-27 08:00 A | 2004-10-13 17:00 A |  | 100% |  | 2004-10-12 08:00 | 2004-10-13 17:00 | 2d? |  |  |  | 41h | 41h | 1,685 | 1,395 | 1,685 |
| 19 | 1.1.4.1 | Data Flow |  | 1d? | 2004-09-27 08:00 A | 2004-09-27 17:00 A |  | 100% |  |  |  |  |  | start no earlier than 2004-09-27 08:00 | System Analyst [25%] | 2h | 2h | 90 |  | 90 |
| 20 | 1.1.4.2 | Control Flow |  | 1d? | 2004-09-28 08:00 A | 2004-09-28 17:00 A | 19 | 100% |  |  |  |  |  |  | System Analyst [25%] | 2h | 2h | 90 |  | 90 |
| 21 | 1.1.4.3 | Class: Design Project |  | 0.38d? | 2004-09-29 08:00 A | 2004-09-29 11:00 A | 20 | 100% |  | 2004-09-29 08:00 | 2004-09-29 11:00 | 0.38d? |  | start no earlier than 2004-09-29 08:00 | System Analyst | 3h | 3h | 135 | 135 | 135 |
| 22 | 1.1.4.4 | Design Modules in Detail |  | 1d? | 2004-10-04 08:00 A | 2004-10-04 17:00 A | 21 | 100% |  | 2004-10-13 08:00 | 2004-10-13 17:00 | 1d? |  | start no earlier than 2004-10-04 08:00 | System Analyst [87.5%] | 7h | 7h | 315 | 315 | 315 |
| 23 | 1.1.4.5 | Class: Design Project |  | 0.38d? | 2004-10-06 08:00 A | 2004-10-06 11:00 A | 22 | 100% |  | 2004-10-06 08:00 | 2004-10-06 11:00 | 0.38d? |  | start no earlier than 2004-10-06 08:00 | System Analyst | 3h | 3h | 135 | 135 | 135 |
| 24 | 1.1.4.6 | Research Speech Recognition Algorithm |  | 1d? | 2004-10-11 08:00 A | 2004-10-11 17:00 A | 23 | 100% |  | 2004-10-13 08:00 | 2004-10-13 17:00 | 1d? |  | start no earlier than 2004-10-11 08:00 | System Analyst | 8h | 8h | 360 | 360 | 360 |
| 25 | 1.1.4.7 | Write PDR |  | 2d? | 2004-10-12 08:00 A | 2004-10-13 17:00 A | 24 | 100% |  | 2004-10-12 08:00 | 2004-10-13 17:00 | 2d? |  | finish no earlier than 2004-10-13 17:00 | Technical Writer | 16h | 16h | 560 | 720 | 560 |

| ID | WBS | Task | Duration | Start | Finish | Predecessors | Complete | Remaining | Baseline start | Baseline finish | Baseline duration | Total slack | Constraint | Resources | Work | Actual work | Cost | Baseline cost | Actual cost |
| --- | --- | --- | --- | --- | --- | --- | --- | --- | --- | --- | --- | --- | --- | --- | --- | --- | --- | --- | --- |
| 26 | 1.1.5 | **CDR Work** | 22d? | 2004-10-20 08:00 A | 2004-11-10 17:00 |  | 91% | 2.08d? | 2004-11-10 08:00 | 2004-11-10 17:00 | 1d? | 167d |  |  | 60h | 53h | 2,415 |  | 2,100 |
| 27 | 1.1.5.1 | Class: Design Project | 0.38d? | 2004-10-20 08:00 A | 2004-10-20 11:00 A |  | 100% |  | 2004-10-20 08:00 | 2004-10-20 11:00 | 0.38d? |  | start no earlier than 2004-10-20 08:00 | System Analyst | 3h | 3h | 135 | 135 | 135 |
| 28 | 1.1.5.2 | Design GUI | 0.5d? | 2004-10-24 08:00 A | 2004-10-24 12:00 A |  | 100% |  |  |  |  |  | start no earlier than 2004-10-24 08:00 | System Analyst | 4h | 4h | 180 |  | 180 |
| 29 | 1.1.5.3 | Class: Design Project | 0.38d? | 2004-10-27 08:00 A | 2004-10-27 11:00 A | 28 | 100% |  | 2004-10-27 08:00 | 2004-10-27 11:00 | 0.38d? |  | start no earlier than 2004-10-27 08:00 | System Analyst | 3h | 3h | 135 | 135 | 135 |
| 30 | 1.1.5.4 | Write Psudo Code | 0.38d? | 2004-10-30 08:00 A | 2004-10-30 11:00 A | 29 | 100% |  | 2004-11-03 08:00 | 2004-11-03 11:00 | 0.38d? |  | start no earlier than 2004-10-30 08:00 | Programmer | 3h | 3h | 120 | 135 | 120 |
| 31 | 1.1.5.5 | Class: Design Project | 0.38d? | 2004-11-01 08:00 A | 2004-11-01 11:00 A | 30 | 100% |  | 2004-11-03 08:00 | 2004-11-03 11:00 | 0.38d? |  | start no earlier than 2004-11-01 08:00 | System Analyst | 3h | 3h | 135 | 135 | 135 |
| 32 | 1.1.5.6 | Design Indexing of Files in Library | 1d? | 2004-11-02 08:00 A | 2004-11-02 17:00 A | 31 | 100% |  |  |  |  |  | start no earlier than 2004-11-02 08:00 | System Analyst | 4h | 4h | 180 |  | 180 |
| 33 | 1.1.5.7 | Design Recognition Algorithm | 1d? | 2004-11-03 08:00 A | 2004-11-03 17:00 A | 32 | 100% |  |  |  |  |  | finish no earlier than 2004-11-03 17:00 | System Analyst | 4h | 4h | 180 |  | 180 |
| 34 | 1.1.5.8 | Design Library Schema | 1d? | 2004-11-04 08:00 A | 2004-11-04 17:00 A | 33 | 100% |  |  |  |  |  | start no earlier than 2004-11-04 08:00 | System Analyst | 2h | 2h | 90 |  | 90 |
| 35 | 1.1.5.9 | Write Theory of Speech Recognition | 0.88d? | 2004-11-05 08:00 | 2004-11-05 16:00 | 34 |  |  | 2004-11-10 08:00 | 2004-11-10 17:00 | 1d? | 172.12d | start no earlier than 2004-11-05 08:00 | System Analyst | 7h |  | 315 |  |  |
| 36 | 1.1.5.10 | Write CDR | 1.12d? | 2004-11-06 08:00 A | 2004-11-07 09:00 A | 35 | 100% |  | 2004-11-10 08:00 | 2004-11-10 17:00 | 1d? |  | start no earlier than 2004-11-06 08:00 | Technical Writer | 9h | 9h | 315 |  | 315 |
| 37 | 1.1.5.11 | Write CDR | 1.12d? | 2004-11-07 09:00 A | 2004-11-08 10:00 A | 36 | 100% |  | 2004-11-10 08:00 | 2004-11-10 17:00 | 1d? |  |  | Technical Writer | 9h | 9h | 315 |  | 315 |
| 38 | 1.1.5.12 | Write CDR | 1.12d? | 2004-11-09 16:00 A | 2004-11-10 17:00 A | 37 | 100% |  | 2004-11-10 08:00 | 2004-11-10 17:00 | 1d? |  | finish no earlier than 2004-11-10 17:00 | Technical Writer | 9h | 9h | 315 |  | 315 |
| 39 | 1.1.6 | **FDR Work** | 14d? | 2004-11-17 08:00 A | 2004-11-30 17:00 A |  | 100% |  | 2004-12-08 08:00 | 2004-12-08 17:00 | 1d? |  |  |  | 58h | 58h | 2,205 |  | 2,205 |
| 40 | 1.1.6.1 | Construct C++ Hotkey | 0.25d | 2004-11-17 08:00 A | 2004-11-17 10:00 A |  | 100% |  |  |  |  |  | start no earlier than 2004-11-17 08:00 | Programmer | 2h | 2h | 80 |  | 80 |
| 41 | 1.1.6.2 | Class: Build Project | 0.38d? | 2004-11-17 10:00 A | 2004-11-17 14:00 A | 40 | 100% |  | 2004-11-17 08:00 | 2004-11-17 11:00 | 0.38d? |  | start no earlier than 2004-11-17 08:00 | System Analyst | 3h | 3h | 135 | 135 | 135 |
| 42 | 1.1.6.3 | Construct Record and Sample Module | 0.5d | 2004-11-17 14:00 A | 2004-11-18 09:00 A | 41 | 100% |  |  |  |  |  |  | Programmer | 4h | 4h | 160 |  | 160 |
| 43 | 1.1.6.4 | Construct Play Module for testing purposes | 0.12d | 2004-11-18 09:00 A | 2004-11-18 10:00 A | 42 | 100% |  |  |  |  |  |  | Programmer | 1h | 1h | 40 |  | 40 |
| 44 | 1.1.6.5 | Test Demo | 0.25d | 2004-11-18 10:00 A | 2004-11-18 12:00 A | 43 | 100% |  |  |  |  |  |  | Test Programmer | 2h | 2h | 70 |  | 70 |
| 45 | 1.1.6.6 | Integrate Demo | 0.62d | 2004-11-18 13:00 A | 2004-11-19 09:00 A | 44 | 100% |  |  |  |  |  |  | Test Programmer | 5h | 5h | 175 |  | 175 |
| 46 | 1.1.6.7 | Test GUI | 0.25d | 2004-11-23 08:00 A | 2004-11-23 10:00 A | 45 | 100% |  |  |  |  |  | start no earlier than 2004-11-23 08:00 | Test Programmer | 2h | 2h | 70 |  | 70 |
| 47 | 1.1.6.8 | Class: Build Project | 0.38d? | 2004-11-24 08:00 A | 2004-11-24 11:00 A | 46 | 100% |  | 2004-11-24 08:00 | 2004-11-24 11:00 | 0.38d? |  | start no earlier than 2004-11-24 08:00 | System Analyst | 3h | 3h | 135 | 135 | 135 |
| 48 | 1.1.6.9 | Integrate Hotkey with Sample GUI | 0.38d | 2004-11-24 11:00 A | 2004-11-24 15:00 A | 47 | 100% |  |  |  |  |  | start no earlier than 2004-11-24 08:00 | Test Programmer | 3h | 3h | 105 |  | 105 |
| 49 | 1.1.6.10 | Prepare FDR | 1d? | 2004-11-25 08:00 A | 2004-11-25 17:00 A | 48 | 100% |  | 2004-12-08 08:00 | 2004-12-08 17:00 | 1d? |  | start no earlier than 2004-11-25 08:00 | System Analyst | 8h | 8h | 360 |  | 360 |
| 50 | 1.1.6.11 | Write FDR | 1.12d? | 2004-11-26 08:00 A | 2004-11-27 09:00 A | 49 | 100% |  | 2004-12-08 08:00 | 2004-12-08 17:00 | 1d? |  | start no earlier than 2004-11-26 08:00 | Technical Writer | 9h | 9h | 315 |  | 315 |
| 51 | 1.1.6.12 | Write FDR | 1d? | 2004-11-28 08:00 A | 2004-11-28 17:00 A | 50 | 100% |  | 2004-12-08 08:00 | 2004-12-08 17:00 | 1d? |  | start no earlier than 2004-11-28 08:00 | Technical Writer | 8h | 8h | 280 |  | 280 |
| 52 | 1.1.6.13 | Write FDR | 1d? | 2004-11-30 08:00 A | 2004-11-30 17:00 A | 51 | 100% |  | 2004-12-08 08:00 | 2004-12-08 17:00 | 1d? |  | start no earlier than 2004-11-30 08:00 | Technical Writer | 8h | 8h | 280 |  | 280 |

| ID | WBS | Task | Duration | Start | Finish | Predecessors | Baseline start | Baseline finish | Baseline duration | Total slack | Free slack | Constraint | Resources | Work | Cost | Baseline cost |
| --- | --- | --- | --- | --- | --- | --- | --- | --- | --- | --- | --- | --- | --- | --- | --- | --- |
| 53 | 1.2 | **Winter Break** | 34.75d? | 2004-12-01 08:00 | 2005-01-04 15:00 |  |  |  |  | 112.25d |  |  |  | 161h | 6,070 |  |
| 54 | 1.2.1 | Construct Speech Recognition | 1.25d? | 2004-12-01 08:00 | 2004-12-02 10:00 |  |  |  |  | 126.88d | 0.75d | start no earlier than 2004-12-01 08:00 | Programmer | 10h | 400 |  |
| 55 | 1.2.2 | Construct Speech Recognition | 1.25d? | 2004-12-03 08:00 | 2004-12-04 10:00 | 54 |  |  |  | 126.12d | 0d | start no earlier than 2004-12-03 08:00 | Programmer | 10h | 400 |  |
| 56 | 1.2.3 | Construct Speech Recognition | 1.25d? | 2004-12-04 10:00 | 2004-12-05 12:00 | 55 |  |  |  | 126.12d | 0d | start no earlier than 2004-12-03 08:00 | Programmer | 10h | 400 |  |
| 57 | 1.2.4 | Complete GUI Module | 1.25d? | 2004-12-05 13:00 | 2004-12-06 15:00 | 56 |  |  |  | 126.12d | 0d |  | Programmer | 10h | 400 |  |
| 58 | 1.2.5 | Complete GUI Module | 1.25d? | 2004-12-06 15:00 | 2004-12-07 17:00 | 57 |  |  |  | 126.12d | 0d |  | Programmer | 10h | 400 |  |
| 59 | 1.2.6 | Complete GUI Module | 1.5d? | 2004-12-08 08:00 | 2004-12-09 12:00 | 58 |  |  |  | 126.12d | 0d |  | Programmer | 12h | 480 |  |
| 60 | 1.2.7 | Complete Library Module | 0.62d? | 2004-12-09 13:00 | 2004-12-10 09:00 | 59 |  |  |  | 126.12d | 0d |  | Programmer | 5h | 200 |  |
| 61 | 1.2.8 | Construct Feature Extractor | 1.25d? | 2004-12-10 09:00 | 2004-12-11 11:00 | 60 |  |  |  | 126.12d | 0d |  | Programmer | 10h | 400 |  |
| 62 | 1.2.9 | Construct Feature Extractor | 1.25d? | 2004-12-11 11:00 | 2004-12-12 14:00 | 61 |  |  |  | 126.12d | 0d |  | Programmer | 10h | 400 |  |
| 63 | 1.2.10 | Test Speech Recognition | 0.88d? | 2004-12-12 14:00 | 2004-12-13 12:00 | 62 |  |  |  | 126.12d | 0d |  | Test Programmer | 7h | 245 |  |
| 64 | 1.2.11 | Test Speech Recognition | 0.88d? | 2004-12-13 13:00 | 2004-12-14 11:00 | 63 |  |  |  | 126.12d | 0.62d |  | Test Programmer | 7h | 245 |  |
| 65 | 1.2.12 | Test Speech Recognition | 1.12d? | 2004-12-15 08:00 | 2004-12-16 09:00 | 64 |  |  |  | 125.5d | 1.88d | start no earlier than 2004-12-15 08:00 | Test Programmer | 9h | 315 |  |
| 66 | 1.2.13 | Integrate Speech Recognition | 1.38d? | 2004-12-18 08:00 | 2004-12-19 11:00 | 65 |  |  |  | 123.62d | 0d | start no earlier than 2004-12-18 08:00 | Test Programmer | 11h | 385 |  |
| 67 | 1.2.14 | Integrate Speech Recognition | 1.25d? | 2004-12-19 11:00 | 2004-12-20 14:00 | 66 |  |  |  | 123.62d | 1.38d | start no earlier than 2004-12-18 08:00 | Test Programmer | 10h | 350 |  |
| 68 | 1.2.15 | Test GUI | 0.62d? | 2004-12-22 08:00 | 2004-12-22 14:00 | 67 |  |  |  | 122.25d | 1.38d | start no earlier than 2004-12-22 08:00 | Test Programmer | 5h | 175 |  |
| 69 | 1.2.16 | Integrate GUI | 0.5d? | 2004-12-24 08:00 | 2004-12-24 12:00 | 68 |  |  |  | 120.88d | 3.5d | start no earlier than 2004-12-24 08:00 | Test Programmer | 4h | 140 |  |
| 70 | 1.2.17 | Test Feature Extractor | 1d? | 2004-12-28 08:00 | 2004-12-28 17:00 | 69 |  |  |  | 117.38d | 0d | start no earlier than 2004-12-28 08:00 | Test Programmer | 8h | 280 |  |
| 71 | 1.2.18 | Test Feature Extractor | 0.88d? | 2004-12-29 08:00 | 2004-12-29 16:00 | 70 |  |  |  | 117.38d | 5.12d | start no earlier than 2004-12-28 08:00 | Test Programmer | 7h | 245 |  |
| 72 | 1.2.19 | Integrate Feature Extractor | 0.75d? | 2005-01-04 08:00 | 2005-01-04 15:00 | 71 |  |  |  | 112.25d |  | start no earlier than 2005-01-04 08:00 | Test Programmer | 6h | 210 |  |
| 73 | 1.3 | **Spring 2005** | 106d? | 2005-01-11 08:00 | 2005-04-27 08:00 |  | 2005-01-19 08:00 | 2005-05-04 17:00 | 76d? | 0d |  |  |  | 245h | 9,050 | 15,365 |
| 74 | 1.3.1 | **Progress Report #1** | 16d? | 2005-01-11 08:00 | 2005-01-26 17:00 |  | 2005-01-19 08:00 | 2005-01-26 15:00 | 5.75d? | 90d |  |  |  | 67h | 2,475 | 2,750 |
| 75 | 1.3.1.1 | Write Record and Filter Module | 1.25d? | 2005-01-11 08:00 | 2005-01-12 10:00 |  | 2005-01-19 08:00 | 2005-01-26 08:00 | 5d? | 97.62d | 2.75d | start no earlier than 2005-01-11 08:00 | Programmer | 10h | 400 | 1,600 |
| 76 | 1.3.1.2 | Test Record and Filter Module | 0.88d? | 2005-01-15 08:00 | 2005-01-15 16:00 | 75 | 2005-01-26 08:00 | 2005-01-26 15:00 | 0.75d? | 94.88d | 0d | start no earlier than 2005-01-15 08:00 | Test Programmer | 7h | 245 | 210 |
| 77 | 1.3.1.3 | Test Record and Filter Module | 0.88d? | 2005-01-15 16:00 | 2005-01-16 15:00 | 76 | 2005-01-26 08:00 | 2005-01-26 15:00 | 0.75d? | 94.88d | 0.25d | start no earlier than 2005-01-15 08:00 | Test Programmer | 7h | 245 | 210 |
| 78 | 1.3.1.4 | Integrate Record and Filter Module | 1.5d? | 2005-01-17 08:00 | 2005-01-18 12:00 | 77 |  |  |  | 94.62d | 0.5d | start no earlier than 2005-01-17 08:00 | Test Programmer | 12h | 420 |  |
| 79 | 1.3.1.5 | Write Save to Disk Module | 1.25d? | 2005-01-19 08:00 | 2005-01-20 10:00 | 78 | 2005-01-21 13:00 | 2005-01-26 08:00 | 2.5d? | 94.12d | 0d | start no earlier than 2005-01-19 08:00 | Programmer | 10h | 400 | 800 |
| 80 | 1.3.1.6 | Class: Introduction | 0.38d? | 2005-01-20 10:00 | 2005-01-20 14:00 | 79 | 2005-01-19 08:00 | 2005-01-19 11:00 | 0.38d? | 94.12d | 0d | start no earlier than 2005-01-19 08:00 | System Analyst | 3h | 135 | 135 |
| 81 | 1.3.1.7 | Test Saving File Module | 1.12d? | 2005-01-20 14:00 | 2005-01-21 15:00 | 80 |  |  |  | 94.12d | 4.12d |  | Test Programmer | 9h | 315 |  |
| 82 | 1.3.1.8 | Integrate Saving File Module | 1.12d? | 2005-01-25 16:00 | 2005-01-26 17:00 | 81 | 2005-01-26 08:00 | 2005-01-26 12:00 | 0.5d? | 90d |  | finish no earlier than 2005-01-26 17:00 | Test Programmer | 9h | 315 | 140 |

| ID | WBS | Task | Type | Duration | Start | Finish | Predecessors | Baseline start | Baseline finish | Baseline duration | Total slack | Free slack | Constraint | Resources | Work | Cost | Baseline cost |
| --- | --- | --- | --- | --- | --- | --- | --- | --- | --- | --- | --- | --- | --- | --- | --- | --- | --- |
| 83 | 1.3.2 | **Progress Report #2** |  | 18d? | 2005-01-30 08:00 | 2005-02-16 17:00 |  | 2005-02-10 13:00 | 2005-02-16 12:00 | 4d? | 69d |  |  |  | 55h | 2,080 | 1,260 |
| 84 | 1.3.2.1 | Class: Build Project |  | 0.38d? | 2005-01-30 08:00 | 2005-01-30 11:00 |  | 2005-02-02 08:00 | 2005-02-02 11:00 | 0.38d? | 80.12d | 0d | start no earlier than 2005-01-30 08:00 | System Analyst | 3h | 135 | 135 |
| 85 | 1.3.2.2 | Write Sampling Module |  | 0.25d? | 2005-01-30 11:00 | 2005-01-30 14:00 | 84 | 2005-03-02 08:00 | 2005-03-09 08:00 | 5d? | 80.12d | 2.38d |  | Programmer | 2h | 80 | 1,600 |
| 86 | 1.3.2.3 | Test Sampling Module |  | 0.25d? | 2005-02-02 08:00 | 2005-02-02 10:00 | 85 | 2005-03-08 13:00 | 2005-03-09 08:00 | 0.5d? | 77.75d | 3.75d | start no earlier than 2005-02-02 08:00 | Test Programmer | 2h | 70 | 140 |
| 87 | 1.3.2.4 | Integrate Sampling Module |  | 0.62d? | 2005-02-06 08:00 | 2005-02-06 14:00 | 86 |  |  |  | 74d | 2.38d | start no earlier than 2005-02-06 08:00 | Test Programmer | 5h | 175 |  |
| 88 | 1.3.2.5 | Class: Build Project |  | 0.38d? | 2005-02-09 08:00 | 2005-02-09 11:00 | 87 | 2005-02-09 08:00 | 2005-02-09 11:00 | 0.38d? | 71.62d | 2.62d | start no earlier than 2005-02-09 08:00 | Programmer | 3h | 120 | 135 |
| 89 | 1.3.2.6 | Write Inserting to Library Module |  | 1.25d? | 2005-02-12 08:00 | 2005-02-13 10:00 | 88 | 2005-02-10 13:00 | 2005-02-16 08:00 | 3.5d? | 69d | 0d | start no earlier than 2005-02-12 08:00 | Programmer | 10h | 400 | 1,120 |
| 90 | 1.3.2.7 | Write Inserting to Library Module |  | 1.25d? | 2005-02-13 10:00 | 2005-02-14 12:00 | 89 | 2005-02-10 13:00 | 2005-02-16 08:00 | 3.5d? | 69d | 0d | start no earlier than 2005-02-12 08:00 | Programmer | 10h | 400 | 1,120 |
| 91 | 1.3.2.8 | Test Inserting to Library |  | 1.12d? | 2005-02-14 13:00 | 2005-02-15 14:00 | 90 | 2005-02-16 08:00 | 2005-02-16 12:00 | 0.5d? | 69d | 0d | start no earlier than 2005-02-12 08:00 | Test Programmer | 9h | 315 | 140 |
| 92 | 1.3.2.9 | Integrate Inserting to Library |  | 1.38d? | 2005-02-15 14:00 | 2005-02-16 17:00 | 91 |  |  |  | 69d |  | start no earlier than 2005-02-15 08:00 | Test Programmer | 11h | 385 |  |
| 93 | 1.3.3 | **Progress Report #3** |  | 8.5d? | 2005-02-23 08:00 | 2005-03-03 12:00 |  | 2005-02-16 08:00 | 2005-03-09 08:00 | 15d? | 54.5d |  |  |  | 19h | 735 | 6,890 |
| 94 | 1.3.3.1 | Class: Test and Integrate |  | 0.38d? | 2005-02-23 08:00 | 2005-02-23 11:00 |  | 2005-03-02 08:00 | 2005-03-02 11:00 | 0.38d? | 60.62d | 3.62d | start no earlier than 2005-02-23 08:00 | System Analyst | 3h | 135 | 135 |
| 95 | 1.3.3.2 | Write Launching Application Module |  | 0.25d? | 2005-02-27 08:00 | 2005-02-27 10:00 | 94 | 2005-04-01 13:00 | 2005-04-06 08:00 | 2.5d? | 57d | 0d | start no earlier than 2005-02-27 08:00 | Programmer | 2h | 80 | 800 |
| 96 | 1.3.3.3 | Class: Build Project |  | 0.38d? | 2005-02-27 10:00 | 2005-02-27 14:00 | 95 | 2005-02-23 08:00 | 2005-02-23 11:00 | 0.38d? | 57d | 2.38d | start no earlier than 2005-02-23 08:00 | System Analyst | 3h | 135 | 135 |
| 97 | 1.3.3.4 | Test Launching Application Module |  | 0.88d? | 2005-03-02 08:00 | 2005-03-02 16:00 | 96 | 2005-04-05 14:00 | 2005-04-06 08:00 | 0.38d? | 54.62d | 0.12d | start no earlier than 2005-03-02 08:00 | Test Programmer | 7h | 245 | 105 |
| 98 | 1.3.3.5 | Integrate Launching Application Module |  | 0.5d? | 2005-03-03 08:00 | 2005-03-03 12:00 | 97 |  |  |  | 54.5d |  | start no earlier than 2005-03-03 08:00 | Test Programmer | 4h | 140 |  |
| 99 | 1.3.4 | **Progress Report #4** |  | 20.38d? | 2005-03-10 08:00 | 2005-03-30 11:00 |  | 2005-04-01 13:00 | 2005-04-06 08:00 | 2.5d? | 27.62d |  |  |  | 31h | 1,145 | 905 |
| 100 | 1.3.4.1 | Write Manual |  | 1d? | 2005-03-10 08:00 | 2005-03-10 17:00 |  |  |  |  | 44.12d | 6d | start no earlier than 2005-03-10 08:00 | Technical Writer | 8h | 280 |  |
| 101 | 1.3.4.2 | Write Manual |  | 1d? | 2005-03-17 08:00 | 2005-03-17 17:00 | 100 |  |  |  | 38.12d | 5d | start no earlier than 2005-03-17 08:00 | Technical Writer | 8h | 280 |  |
| 102 | 1.3.4.3 | Class: Test and Integrate |  | 0.38d? | 2005-03-23 08:00 | 2005-03-23 11:00 | 101 | 2005-03-23 08:00 | 2005-03-23 11:00 | 0.38d? | 33.12d | 2.62d | start no earlier than 2005-03-23 08:00 | System Analyst | 3h | 135 | 135 |
| 103 | 1.3.4.4 | Write Manual |  | 1.12d? | 2005-03-26 08:00 | 2005-03-27 09:00 | 102 |  |  |  | 30.5d | 2.88d | start no earlier than 2005-03-26 08:00 | Technical Writer | 9h | 315 |  |
| 104 | 1.3.4.5 | Class: Test and Integrate |  | 0.38d? | 2005-03-30 08:00 | 2005-03-30 11:00 | 103 | 2005-03-30 08:00 | 2005-03-30 11:00 | 0.38d? | 27.62d |  | start no earlier than 2005-03-30 08:00 | System Analyst | 3h | 135 | 135 |
| 105 | 1.3.5 | **Project Presentations** |  | 23.12d? | 2005-04-03 08:00 | 2005-04-26 09:00 |  | 2005-04-28 09:00 | 2005-05-04 17:00 | 4.88d? | 0.88d |  |  |  | 73h | 2,615 | 2,345 |
| 106 | 1.3.5.1 | Prepare Project Presentation |  | 1.25d? | 2005-04-03 08:00 | 2005-04-04 10:00 |  | 2005-04-29 13:00 | 2005-05-04 17:00 | 3.5d? | 14.88d | 3.75d | start no earlier than 2005-04-03 08:00 | Technical Writer | 10h | 350 | 980 |
| 107 | 1.3.5.2 | Prepare Project Presentation |  | 1.25d? | 2005-04-08 08:00 | 2005-04-09 10:00 | 106 | 2005-04-29 13:00 | 2005-05-04 17:00 | 3.5d? | 11.12d | 3.75d | start no earlier than 2005-04-08 08:00 | Technical Writer | 10h | 350 | 980 |
| 108 | 1.3.5.3 | Class: Test Project |  | 0.38d? | 2005-04-13 08:00 | 2005-04-13 11:00 | 107 | 2005-04-13 08:00 | 2005-04-13 11:00 | 0.38d? | 7.38d | 0.62d | start no earlier than 2005-04-13 08:00 | System Analyst | 3h | 135 | 135 |
| 109 | 1.3.5.4 | Prepare Project Presentation |  | 1d? | 2005-04-14 08:00 | 2005-04-14 17:00 | 108 | 2005-04-29 13:00 | 2005-05-04 17:00 | 3.5d? | 6.75d | 3d | start no earlier than 2005-04-14 08:00 | Technical Writer | 8h | 280 | 980 |
| 110 | 1.3.5.5 | Write Project Presentation |  | 1.25d? | 2005-04-18 08:00 | 2005-04-19 10:00 | 109 | 2005-04-28 09:00 | 2005-05-04 17:00 | 4.88d? | 3.75d | 1.75d | start no earlier than 2005-04-18 08:00 | Technical Writer | 10h | 350 | 1,365 |
| 111 | 1.3.5.6 | Write Project Presentation |  | 1.25d? | 2005-04-21 08:00 | 2005-04-22 10:00 | 110 | 2005-04-28 09:00 | 2005-05-04 17:00 | 4.88d? | 2d | 0d | start no earlier than 2005-04-21 08:00 | Technical Writer | 10h | 350 | 1,365 |
| 112 | 1.3.5.7 | Class: Document Project |  | 0.38d? | 2005-04-22 10:00 | 2005-04-22 14:00 | 111 | 2005-04-20 08:00 | 2005-04-20 11:00 | 0.38d? | 2d | 0.38d | start no earlier than 2005-04-20 08:00 | System Analyst | 3h | 135 | 135 |
| 113 | 1.3.5.8 | Write Project Presentation |  | 1.25d? | 2005-04-23 08:00 | 2005-04-24 10:00 | 112 | 2005-04-28 09:00 | 2005-05-04 17:00 | 4.88d? | 1.62d | 0.75d | start no earlier than 2005-04-23 08:00 | Technical Writer | 10h | 350 | 1,365 |
| 114 | 1.3.5.9 | Write Project Presentation |  | 1.12d? | 2005-04-25 08:00 | 2005-04-26 09:00 | 113 | 2005-04-28 09:00 | 2005-05-04 17:00 | 4.88d? | 0.88d |  | start no earlier than 2005-04-25 08:00 | Technical Writer | 9h | 315 | 1,365 |
| 115 | 1.3.6 | Final Presentaion | milestone | 0d | 2005-04-27 08:00 | 2005-04-27 08:00 |  |  |  |  | 0d |  | start no earlier than 2005-04-27 08:00 |  |  |  |  |
